project "ICS 2024" 2023-09-18 - 2024-02-03 {
}

#########################################
# Factor in 80% capacity due to OS course
#########################################
shift reduced "EDA093" {
  workinghours mon - fri 09:00 - 15:30  // 80% capacity
}

shift super_assist "Intro Assistance" {
  workinghours fri 09:00 - 13:00  // half a day per week
}

resource konstantinos "konstantinos" {

  vacation "WASP study trip USA" 2023-09-23 +7d

  vacation "Christmas Holidays" 2023-12-22 - 2024-01-02

  vacation "WASP Winter Conference" 2024-01-09 +3d

  shifts reduced 2023-09-18 - 2023-10-20

}

resource angelos "Angelos" {
  shifts super_assist 2023-11-20 - 2023-12-22
}

resource per "Per" {
  shifts super_assist 2023-11-20 - 2023-12-22
}

task ics "ICS 2024" {
  purge allocate
  allocate konstantinos


  #######################
  # Milestones
  #######################
  task preliminary "Preliminary Results: Go/NoGo for ICS" {
    milestone
    depends ics.data.simple
    maxend 2023-12-22
  }

  task abstract_sub "Abstract Submission" {
    milestone
    depends ics.paper.abstract
    maxend 2024-01-27
  }

  task paper_sub "Paper Submission" {
    milestone
    depends ics.polish
    maxend 2024-02-03
  }

  #######################
  # Benchmarks
  #######################
  task find_scalability "Find benchmarks to demo scalability" {
    start 2023-09-18

    task check_gnn "Check GNNs" {
      effort 5d
    }
    task check_llm "Check LLMs" {
      effort 5d
    }
    task check_graph_db "Check Graph DBs" {
      effort 5d
    }
  }

  #######################
  # Compiler
  #######################
  task design_compiler "Design Compiler" {
    depends !find_scalability

    task identify_isa "Identify ISA extensions" {
      effort 5d
    }

    task solve_cyclic "Handle cyclic dependencies between slices" {
      effort 5d
    }

    task write_slice "Add LLVM pass for slicing" {
      effort 5d
    }
  }

  #######################
  # Micro
  #######################
  task micro "Design Micro" {

    task init "Initiate design discussions on micro" {
      depends ics.design_compiler.identify_isa
      priority 600
      effort 2d
    }

    task isa "Map ISA to micro" {
      priority 400
      effort 15d
    }
  }

  #######################
  # Data
  #######################
  task data "Collect Data" {

    task data_gem5 "Add ISA extensions in gem5" {
      depends ics.micro.isa
      effort 5d
    }

    task simple "Collect data for simple benchmarks" {
      depends !data_gem5
      effort 4d
    }

    task gnn "Collect data from GNNs benchmarks" {
      depends !simple
      effort 4d
    }

    task llm "Collect data from LLMs benchmarks" {
      depends !simple
      effort 4d
    }

  }

  #######################
  # Paper
  #######################
  task paper "Write Paper" {

    task intro "Write intro" {
      start 2023-11-20
      allocate konstantinos, angelos, per
      effort 8d
    }

    task body "Write body" {
      depends ics.micro
      effort 4d
    }

    task res "Write Meth/Res" {
      depends ics.data
      effort 4.75d
    }

    task abstract "Write abstract" {
      depends !res
      allocate konstantinos, angelos, per
      effort 5d
    }
  }


  task polish "Gap between abstract/paper sub: Polishing" {
    depends ics.paper
    allocate konstantinos, angelos, per
    effort 14d
  }

}

# Export the project in mspxml
export "plan-MS-Project" {
  formats mspxml
  definitions *
  taskattributes *
  hideresource 0
}

textreport report "plan" {
  formats html
  header '== ICS 2024 =='

  center -8<-
    [#Plan Plan] | [#Resource_Allocation Resource Allocation]
    ----
    === Plan ===
    <[report id="plan"]>
    ----
    === Resource Allocation ===
    <[report id="resourceGraph"]>
  ->8-
}

# A simplified table-friendly overview
taskreport plan_table "plan-table" {
  formats csv
  loadunit days
  columns name, start, end, effort
}

# A traditional Gantt chart with a project overview.
taskreport plan "" {
  headline "Project Plan"
  columns bsi, name, start, end, effort, chart
  loadunit shortauto
  hideresource 1
}

# A graph showing resource allocation. It identifies whether each
# resource is under- or over-allocated for.
resourcereport resourceGraph "" {
  headline "Resource Allocation Graph"
  columns no, name, effort, weekly
  loadunit shortauto
  hidetask ~(isleaf() & isleaf_())
  sorttasks plan.start.up
}
